# Planificación Sistema de Venta Online de Sidra

Schedule from MS Project, 2023-05-22 to 2024-01-19.
Universidad de Oviedo

## Calendars

- Estándar: Mon-Fri 09:00-13:00, 15:00-19:00; Sat-Sun off.

## Resources

| Resource |
| --- |
| Jefe de proyecto |
| Consultor de tecnología |
| Arquitecto de software |
| Analista de sistemas |
| Administrador de sistemas |
| Jefe de equipo de diseño |
| Diseñador 1 |
| Diseñador 4 |
| Jefe de equipo de desarrollo |
| Desarrollador 1 |
| Desarrollador 2 |
| Desarrollador 3 |
| Desarrollador 4 |
| Experto en seguridad |
| Jefe de equipo de pruebas |
| Tester 1 |
| Tester 2 |
| Secretario |
| Personal de departamento de finanzas |
| Formador |
| Sala de reuniones |
| Técnico de sistemas 2 |
| Técnico de sistemas 1 |
| Impresora |
| Material de oficina |
| Diseñador 3 |
| Diseñador 2 |

## Schedule

| ID | WBS | Task | Type | Duration | Start | Finish | Predecessors | Total slack | Free slack | Constraint | Resources | Work |
| --- | --- | --- | --- | --- | --- | --- | --- | --- | --- | --- | --- | --- |
| 1 | 1 | **Sistema de Venta MerkaSidra** |  | 174.7d | 2023-05-22 | 2024-01-19 |  | 0d |  |  |  | 6176.68h |
| 2 | 1.1 | **Estudio del sistema** |  | 10d | 2023-05-22 | 2023-06-02 |  | 33.2d | 0d |  |  | 224h |
| 3 | 1.1.1 | Antecedentes |  | 1d | 2023-05-22 | 2023-05-22 |  | 36.2d | 3d |  | Analista de sistemas | 8h |
| 4 | 1.1.2 | Estudio de la situación actual |  | 1d | 2023-05-23 | 2023-05-23 |  | 35.2d | 2d |  | Analista de sistemas | 8h |
| 5 | 1.1.3 | Definición del alcance |  | 1d | 2023-05-24 | 2023-05-24 |  | 34.2d | 1d |  | Analista de sistemas | 8h |
| 6 | 1.1.4 | Objeto |  | 1d | 2023-05-25 | 2023-05-25 |  | 33.2d | 0d |  | Analista de sistemas | 8h |
| 7 | 1.1.5 | Obtención de requisitos |  | 3d | 2023-05-26 | 2023-05-30 | 3, 4, 5, 6 | 33.2d | 0d |  | Analista de sistemas; Experto en seguridad; Jefe de equipo de desarrollo; Jefe de equipo de diseño; Jefe de proyecto | 120h |
| 8 | 1.1.6 | Estudio de presupuesto |  | 3d | 2023-05-31 | 2023-06-02 | 7 | 33.2d |  |  | Analista de sistemas; Jefe de proyecto; Personal de departamento de finanzas | 72h |
| 9 | 1.2 | **Planificación del sistema** |  | 4d | 2023-06-05 | 2023-06-08 |  | 33.2d | 0d |  |  | 160h |
| 10 | 1.2.1 | Elaboración de planificación |  | 4d | 2023-06-05 | 2023-06-08 | 2 | 33.2d | 0d |  | Administrador de sistemas; Jefe de equipo de desarrollo; Jefe de equipo de diseño; Jefe de equipo de pruebas; Jefe de proyecto | 160h |
| 11 | 1.2.2 | Entrega de planificación | milestone | 0d | 2023-06-08 | 2023-06-08 | 10 | 33.2d |  |  |  |  |
| 12 | 1.3 | **Organización del proyecto** |  | 160.7d | 2023-06-09 | 2024-01-19 |  | 0d |  |  |  | 409.6h |
| 13 | 1.3.1 | **Reuniones** |  | 160.7d | 2023-06-09 | 2024-01-19 |  | 0d |  |  |  | 409.6h |
| 14 | 1.3.1.1 | **Reunión inicial con el cliente** |  | 1d | 2023-06-09 | 2023-06-09 | 9 | 33.2d | 0d |  | Analista de sistemas; Jefe de proyecto; Material de oficina; Sala de reuniones; Secretario; Personal de departamento de finanzas; Impresora | 32h |
| 15 | 1.3.1.1.1 | Revisión de requisitos y alcance |  | 0.25d | 2023-06-09 | 2023-06-09 |  | 33.2d | 0d |  |  |  |
| 16 | 1.3.1.1.2 | Definición de pruebas de aceptación |  | 0.25d | 2023-06-09 | 2023-06-09 | 15 | 33.2d | 0d |  |  |  |
| 17 | 1.3.1.1.3 | Establecer los plazos de entrega |  | 0.25d | 2023-06-09 | 2023-06-09 | 16 | 33.2d | 0d |  |  |  |
| 18 | 1.3.1.1.4 | Fijar presupuesto del proyecto |  | 0.25d | 2023-06-09 | 2023-06-09 | 17 | 33.2d |  |  |  |  |
| 19 | 1.3.1.2 | **Reunión inicial con el equipo de desarrollo** |  | 1d | 2023-06-12 | 2023-06-12 | 14 | 33.2d | 0d |  | Administrador de sistemas; Arquitecto de software; Desarrollador 1; Desarrollador 2; Desarrollador 3; Desarrollador 4; Diseñador 1; Diseñador 4; Experto en seguridad; Jefe de equipo de desarrollo; Jefe de equipo de diseño; Jefe de equipo de pruebas; Jefe de proyecto; Sala de reuniones; Secretario; Técnico de sistemas 1; Técnico de sistemas 2; Tester 1; Tester 2; Diseñador 2; Diseñador 3; Impresora; Material de oficina | 160h |
| 20 | 1.3.1.2.1 | Presentación del proyecto |  | 0.1d | 2023-06-12 | 2023-06-12 |  | 33.2d | 0d |  |  |  |
| 21 | 1.3.1.2.2 | Establecer metodología de trabajo |  | 0.25d | 2023-06-12 | 2023-06-12 | 20 | 33.2d | 0d |  |  |  |
| 22 | 1.3.1.2.3 | Asignar tareas |  | 0.4d | 2023-06-12 | 2023-06-12 | 21 | 33.2d | 0d |  |  |  |
| 23 | 1.3.1.2.4 | Establecer plazos de entrega |  | 0.25d | 2023-06-12 | 2023-06-12 | 22 | 33.2d |  |  |  |  |
| 24 | 1.3.1.3 | **Reuniones de seguimiento** |  | 130.2d | 2023-06-20 | 2023-12-19 |  | 23.5d |  |  |  | 201.6h |
| 25 | 1.3.1.3.1 | Reuniones de seguimiento 1 |  | 0.2d | 2023-06-20 | 2023-06-20 |  | 153.5d |  | start no earlier than 2023-06-20 | Administrador de sistemas; Arquitecto de software; Experto en seguridad; Jefe de equipo de desarrollo; Jefe de equipo de diseño; Jefe de equipo de pruebas; Jefe de proyecto; Personal de departamento de finanzas; Sala de reuniones; Secretario; Impresora; Material de oficina | 14.4h |
| 26 | 1.3.1.3.2 | Reuniones de seguimiento 2 |  | 0.2d | 2023-07-04 | 2023-07-04 |  | 143.5d |  | start no earlier than 2023-07-04 | Administrador de sistemas; Arquitecto de software; Experto en seguridad; Jefe de equipo de desarrollo; Jefe de equipo de diseño; Jefe de equipo de pruebas; Jefe de proyecto; Personal de departamento de finanzas; Sala de reuniones; Secretario; Impresora; Material de oficina | 14.4h |
| 27 | 1.3.1.3.3 | Reuniones de seguimiento 3 |  | 0.2d | 2023-07-18 | 2023-07-18 |  | 133.5d |  | start no earlier than 2023-07-18 | Administrador de sistemas; Arquitecto de software; Experto en seguridad; Jefe de equipo de desarrollo; Jefe de equipo de diseño; Jefe de equipo de pruebas; Jefe de proyecto; Personal de departamento de finanzas; Sala de reuniones; Secretario; Impresora; Material de oficina | 14.4h |
| 28 | 1.3.1.3.4 | Reuniones de seguimiento 4 |  | 0.2d | 2023-08-01 | 2023-08-01 |  | 123.5d |  | start no earlier than 2023-08-01 | Administrador de sistemas; Arquitecto de software; Experto en seguridad; Jefe de equipo de desarrollo; Jefe de equipo de diseño; Jefe de equipo de pruebas; Jefe de proyecto; Personal de departamento de finanzas; Sala de reuniones; Secretario; Impresora; Material de oficina | 14.4h |
| 29 | 1.3.1.3.5 | Reuniones de seguimiento 5 |  | 0.2d | 2023-08-15 | 2023-08-15 |  | 113.5d |  | start no earlier than 2023-08-15 | Administrador de sistemas; Arquitecto de software; Experto en seguridad; Jefe de equipo de desarrollo; Jefe de equipo de diseño; Jefe de equipo de pruebas; Jefe de proyecto; Personal de departamento de finanzas; Sala de reuniones; Secretario; Impresora; Material de oficina | 14.4h |
| 30 | 1.3.1.3.6 | Reuniones de seguimiento 6 |  | 0.2d | 2023-08-29 | 2023-08-29 |  | 103.5d |  | start no earlier than 2023-08-29 | Administrador de sistemas; Arquitecto de software; Experto en seguridad; Jefe de equipo de desarrollo; Jefe de equipo de diseño; Jefe de equipo de pruebas; Jefe de proyecto; Personal de departamento de finanzas; Sala de reuniones; Secretario; Impresora; Material de oficina | 14.4h |
| 31 | 1.3.1.3.7 | Reuniones de seguimiento 7 |  | 0.2d | 2023-09-12 | 2023-09-12 |  | 93.5d |  | start no earlier than 2023-09-12 | Administrador de sistemas; Arquitecto de software; Experto en seguridad; Jefe de equipo de desarrollo; Jefe de equipo de diseño; Jefe de equipo de pruebas; Jefe de proyecto; Personal de departamento de finanzas; Sala de reuniones; Secretario; Impresora; Material de oficina | 14.4h |
| 32 | 1.3.1.3.8 | Reuniones de seguimiento 8 |  | 0.2d | 2023-09-26 | 2023-09-26 |  | 83.5d |  | start no earlier than 2023-09-26 | Administrador de sistemas; Arquitecto de software; Experto en seguridad; Jefe de equipo de desarrollo; Jefe de equipo de diseño; Jefe de equipo de pruebas; Jefe de proyecto; Personal de departamento de finanzas; Sala de reuniones; Secretario; Impresora; Material de oficina | 14.4h |
| 33 | 1.3.1.3.9 | Reuniones de seguimiento 9 |  | 0.2d | 2023-10-10 | 2023-10-10 |  | 73.5d |  | start no earlier than 2023-10-10 | Administrador de sistemas; Arquitecto de software; Experto en seguridad; Jefe de equipo de desarrollo; Jefe de equipo de diseño; Jefe de equipo de pruebas; Jefe de proyecto; Personal de departamento de finanzas; Sala de reuniones; Secretario; Impresora; Material de oficina | 14.4h |
| 34 | 1.3.1.3.10 | Reuniones de seguimiento 10 |  | 0.2d | 2023-10-24 | 2023-10-24 |  | 63.5d |  | start no earlier than 2023-10-24 | Administrador de sistemas; Arquitecto de software; Experto en seguridad; Jefe de equipo de desarrollo; Jefe de equipo de diseño; Jefe de equipo de pruebas; Jefe de proyecto; Personal de departamento de finanzas; Sala de reuniones; Secretario; Impresora; Material de oficina | 14.4h |
| 35 | 1.3.1.3.11 | Reuniones de seguimiento 11 |  | 0.2d | 2023-11-07 | 2023-11-07 |  | 53.5d |  | start no earlier than 2023-11-07 | Administrador de sistemas; Arquitecto de software; Experto en seguridad; Jefe de equipo de desarrollo; Jefe de equipo de diseño; Jefe de equipo de pruebas; Jefe de proyecto; Personal de departamento de finanzas; Sala de reuniones; Secretario; Impresora; Material de oficina | 14.4h |
| 36 | 1.3.1.3.12 | Reuniones de seguimiento 12 |  | 0.2d | 2023-11-21 | 2023-11-21 |  | 43.5d |  | start no earlier than 2023-11-21 | Administrador de sistemas; Arquitecto de software; Experto en seguridad; Jefe de equipo de desarrollo; Jefe de equipo de diseño; Jefe de equipo de pruebas; Jefe de proyecto; Personal de departamento de finanzas; Sala de reuniones; Secretario; Impresora; Material de oficina | 14.4h |
| 37 | 1.3.1.3.13 | Reuniones de seguimiento 13 |  | 0.2d | 2023-12-05 | 2023-12-05 |  | 33.5d |  | start no earlier than 2023-12-05 | Administrador de sistemas; Arquitecto de software; Experto en seguridad; Jefe de equipo de desarrollo; Jefe de equipo de diseño; Jefe de equipo de pruebas; Jefe de proyecto; Personal de departamento de finanzas; Sala de reuniones; Secretario; Impresora; Material de oficina | 14.4h |
| 38 | 1.3.1.3.14 | Reuniones de seguimiento 14 |  | 0.2d | 2023-12-19 | 2023-12-19 |  | 23.5d |  | start no earlier than 2023-12-19 | Administrador de sistemas; Arquitecto de software; Experto en seguridad; Jefe de equipo de desarrollo; Jefe de equipo de diseño; Jefe de equipo de pruebas; Jefe de proyecto; Personal de departamento de finanzas; Sala de reuniones; Secretario; Impresora; Material de oficina | 14.4h |

| ID | WBS | Task | Type | Duration | Start | Finish | Predecessors | Total slack | Free slack | Resources | Work |
| --- | --- | --- | --- | --- | --- | --- | --- | --- | --- | --- | --- |
| 39 | 1.3.1.4 | **Reunión fin de proyecto** |  | 1d | 2024-01-18 | 2024-01-19 | 159 | 0d |  | Jefe de proyecto; Sala de reuniones; Secretario; Impresora; Material de oficina | 16h |
| 40 | 1.3.1.4.1 | Obtener aprobación del cliente |  | 1d | 2024-01-18 | 2024-01-19 |  | 0d |  |  |  |
| 41 | 1.3.1.4.2 | Firma del cierre del proyecto | milestone | 0d | 2024-01-19 | 2024-01-19 | 40 | 0d |  |  |  |
| 42 | 1.3.2 | **Entregables** |  | 0d | 2024-01-18 | 2024-01-18 | 159 | 1d |  |  |  |
| 43 | 1.3.2.1 | Plan de proyecto | milestone | 0d | 2024-01-18 | 2024-01-18 |  | 1d |  |  |  |
| 44 | 1.3.2.2 | Actas de las reuniones | milestone | 0d | 2024-01-18 | 2024-01-18 |  | 1d |  |  |  |
| 45 | 1.3.2.3 | Informes de seguimiento | milestone | 0d | 2024-01-18 | 2024-01-18 |  | 1d |  |  |  |
| 46 | 1.3.2.4 | Plan de Pruebas de Aceptación | milestone | 0d | 2024-01-18 | 2024-01-18 |  | 1d |  |  |  |
| 47 | 1.3.2.5 | **Documentación** |  | 0d | 2024-01-18 | 2024-01-18 |  | 1d |  |  |  |
| 48 | 1.3.2.5.1 | **Documentación resultante de proyecto** |  | 0d | 2024-01-18 | 2024-01-18 |  | 1d |  |  |  |
| 49 | 1.3.2.5.1.1 | Diseño de arquitectura | milestone | 0d | 2024-01-18 | 2024-01-18 |  | 1d |  |  |  |
| 50 | 1.3.2.5.1.2 | Documentación y manuales de instalación, configuración y parametrización del sistema | milestone | 0d | 2024-01-18 | 2024-01-18 |  | 1d |  |  |  |
| 51 | 1.3.2.5.1.3 | Plan de implantación | milestone | 0d | 2024-01-18 | 2024-01-18 |  | 1d |  |  |  |
| 52 | 1.3.2.5.1.4 | Manual de implantación y explotación | milestone | 0d | 2024-01-18 | 2024-01-18 |  | 1d |  |  |  |
| 53 | 1.3.2.5.2 | Manual de usuario final | milestone | 0d | 2024-01-18 | 2024-01-18 |  | 1d |  |  |  |
| 54 | 1.3.2.5.3 | Plan de mantenimiento | milestone | 0d | 2024-01-18 | 2024-01-18 |  | 1d |  |  |  |
| 55 | 1.3.2.5.4 | Documentación de terceros | milestone | 0d | 2024-01-18 | 2024-01-18 |  | 1d |  |  |  |
| 56 | 1.3.2.6 | Documento del acuerdo de mantenimiento/garantía | milestone | 0d | 2024-01-18 | 2024-01-18 |  | 1d |  |  |  |
| 57 | 1.4 | **Diseño del sistema** |  | 23d | 2023-06-13 | 2023-07-13 | 19 | 25.5d | 0d |  | 812h |
| 58 | 1.4.1 | Diseño de infraestructura |  | 10d | 2023-06-13 | 2023-06-26 |  | 38.5d | 0d | Administrador de sistemas; Consultor de tecnología; Experto en seguridad | 120h |
| 59 | 1.4.2 | Diseño de arquitectura del sistema |  | 5d | 2023-06-13 | 2023-06-19 |  | 33.2d | 0d | Arquitecto de software; Consultor de tecnología | 80h |
| 60 | 1.4.3 | **Diseño de los módulos** |  | 18d | 2023-06-20 | 2023-07-13 | 59 | 25.5d | 0d |  | 468h |
| 61 | 1.4.3.1 | Módulo de comercio electrónico |  | 5.5d | 2023-06-20 | 2023-06-30 |  | 35d |  | Diseñador 1; Diseñador 2 | 44h |
| 62 | 1.4.3.2 | Gestión de almacén |  | 2d | 2023-07-07 | 2023-07-11 |  | 28d |  | Diseñador 3 | 16h |
| 63 | 1.4.3.3 | Módulo de suministro |  | 2d | 2023-06-27 | 2023-06-29 |  | 36d |  | Diseñador 4 | 16h |
| 64 | 1.4.3.4 | Módulo de picking y distribución |  | 2d | 2023-07-06 | 2023-07-10 |  | 29d |  | Diseñador 1 | 16h |

| ID | WBS | Task | Duration | Start | Finish | Predecessors | Total slack | Free slack | Resources | Work |
| --- | --- | --- | --- | --- | --- | --- | --- | --- | --- | --- |
| 65 | 1.4.3.5 | **Gestión de usuario** | 17.8d | 2023-06-20 | 2023-07-13 |  | 25.5d |  |  | 56h |
| 66 | 1.4.3.5.1 | Sistema de mensajería | 1.5d | 2023-07-12 | 2023-07-13 |  | 25.5d |  | Diseñador 2 | 12h |
| 67 | 1.4.3.5.2 | Permisos | 3d | 2023-06-20 | 2023-07-04 |  | 33d |  | Diseñador 2; Experto en seguridad | 24h |
| 68 | 1.4.3.5.3 | Posicionamiento | 2.5d | 2023-06-23 | 2023-06-27 |  | 38d |  | Diseñador 4 | 20h |
| 69 | 1.4.3.6 | **Módulos de soporte y control de infraestructuras** | 15d | 2023-06-21 | 2023-07-12 |  | 27d |  |  | 136h |
| 70 | 1.4.3.6.1 | API de usuarios | 3d | 2023-07-04 | 2023-07-07 |  | 30d |  | Diseñador 2 | 24h |
| 71 | 1.4.3.6.2 | APIs de Picking | 4d | 2023-06-21 | 2023-06-27 |  | 38d |  | Diseñador 1 | 32h |
| 72 | 1.4.3.6.3 | API de compra | 4d | 2023-06-27 | 2023-07-03 |  | 34d |  | Diseñador 1 | 32h |
| 73 | 1.4.3.6.4 | API de mensajería | 3d | 2023-07-07 | 2023-07-12 |  | 27d |  | Diseñador 2 | 24h |
| 74 | 1.4.3.6.5 | API de transportista | 3d | 2023-07-03 | 2023-07-06 |  | 31d |  | Diseñador 1 | 24h |
| 75 | 1.4.3.7 | **Aplicaciones de usuario** | 13.5d | 2023-06-20 | 2023-07-07 |  | 30d |  |  | 184h |
| 76 | 1.4.3.7.1 | App de cliente | 9d | 2023-06-20 | 2023-07-03 |  | 34d |  | Diseñador 3; Diseñador 2 | 72h |
| 77 | 1.4.3.7.2 | App de transportista | 4d | 2023-07-03 | 2023-07-07 |  | 30d |  | Diseñador 3 | 32h |
| 78 | 1.4.3.7.3 | App de gestión | 5d | 2023-06-20 | 2023-06-26 |  | 38.5d |  | Diseñador 3 | 40h |
| 79 | 1.4.3.7.4 | Diseño de dashboard de gestión | 3d | 2023-06-20 | 2023-06-22 |  | 40.5d |  | Diseñador 4 | 24h |
| 80 | 1.4.3.7.5 | Sitio web de compras | 2d | 2023-06-29 | 2023-07-03 |  | 34d |  | Diseñador 4 | 16h |
| 81 | 1.4.4 | Diseño de pruebas | 6.2d | 2023-06-20 | 2023-06-28 | 60SS | 37.3d | 11.8d | Jefe de equipo de pruebas; Tester 1; Tester 2 | 144h |
| 82 | 1.5 | **Adquisición e instalación de hardware** | 22.95d | 2023-06-27 | 2023-07-27 | 58 | 64.55d | 59.55d |  | 371.08h |
| 83 | 1.5.1 | **Adquisición de hardware y soporte** | 12.96d | 2023-06-27 | 2023-07-13 |  | 64.55d | 0d |  | 371.08h |
| 84 | 1.5.1.1 | Estudio de necesidades | 3.5d | 2023-06-27 | 2023-06-30 |  | 74d |  | Administrador de sistemas; Analista de sistemas; Consultor de tecnología | 60h |
| 85 | 1.5.1.2 | Oferta de adquisición | 3.63d | 2023-06-27 | 2023-07-04 |  | 72.5d |  | Analista de sistemas; Jefe de proyecto; Personal de departamento de finanzas; Secretario | 29.04h |
| 86 | 1.5.1.3 | Estudio de ofertas | 5d | 2023-06-27 | 2023-07-05 |  | 70.8d |  | Administrador de sistemas; Consultor de tecnología; Jefe de proyecto; Personal de departamento de finanzas; Secretario | 57h |
| 87 | 1.5.1.4 | Elaboración del pedido / contrato | 4d | 2023-06-28 | 2023-07-10 |  | 68.42d |  | Administrador de sistemas; Personal de departamento de finanzas; Secretario | 32h |
| 88 | 1.5.1.5 | Solicitud del pedido | 1.75d | 2023-06-28 | 2023-07-04 |  | 71.92d |  | Personal de departamento de finanzas; Secretario | 14h |
| 89 | 1.5.1.6 | Instalación de los servidores en los racks | 4d | 2023-06-30 | 2023-07-11 |  | 67.3d |  | Administrador de sistemas; Técnico de sistemas 1; Técnico de sistemas 2 | 56h |
| 90 | 1.5.1.7 | Conexión de los servidores a la red | 4.88d | 2023-07-05 | 2023-07-13 |  | 64.55d |  | Administrador de sistemas; Técnico de sistemas 1; Técnico de sistemas 2 | 63.04h |
| 91 | 1.5.1.8 | Instalación de software | 3.75d | 2023-06-27 | 2023-06-30 |  | 73.75d |  | Técnico de sistemas 1; Técnico de sistemas 2 | 60h |
| 92 | 1.5.2 | Instalación de hardware | 10d | 2023-07-13 | 2023-07-27 | 83 | 64.55d |  |  |  |

| ID | WBS | Task | Duration | Start | Finish | Predecessors | Total slack | Free slack | Resources | Work |
| --- | --- | --- | --- | --- | --- | --- | --- | --- | --- | --- |
| 93 | 1.6 | **Desarrollo de software** | 62.5d | 2023-07-13 | 2023-10-10 | 57 | 5d | 0d |  | 1588h |
| 94 | 1.6.1 | **Desarrollo de módulos y aplicaciones** | 52.5d | 2023-07-13 | 2023-09-26 |  | 5d | 0d |  | 1388h |
| 95 | 1.6.1.1 | Módulo de comercio electrónico | 13d | 2023-08-25 | 2023-09-12 |  | 14.5d |  | Desarrollador 2; Desarrollador 3 | 120h |
| 96 | 1.6.1.2 | Gestión de almacén | 5d | 2023-09-04 | 2023-09-18 |  | 10.5d |  | Desarrollador 2; Desarrollador 3 | 40h |
| 97 | 1.6.1.3 | Módulo de suministro | 6d | 2023-09-05 | 2023-09-20 |  | 8.5d |  | Desarrollador 2; Desarrollador 3 | 48h |
| 98 | 1.6.1.4 | Módulo de picking y distribución | 4.5d | 2023-09-12 | 2023-09-26 |  | 5d |  | Desarrollador 2; Desarrollador 3 | 36h |
| 99 | 1.6.1.5 | **Gestión de usuario** | 32d | 2023-07-14 | 2023-08-28 |  | 25.5d |  |  | 184h |
| 100 | 1.6.1.5.1 | Sistema de mensajería | 6d | 2023-08-21 | 2023-08-28 | 102 | 25.5d |  | Desarrollador 1 | 48h |
| 101 | 1.6.1.5.2 | Permisos | 10d | 2023-08-01 | 2023-08-14 |  | 35.5d |  | Desarrollador 1 | 80h |
| 102 | 1.6.1.5.3 | Posicionamiento | 7d | 2023-07-14 | 2023-07-24 |  | 25.5d | 0d | Desarrollador 1 | 56h |
| 103 | 1.6.1.6 | **Módulos de soporte y control de infraestructuras** | 46d | 2023-07-14 | 2023-09-15 |  | 11.5d |  |  | 112h |
| 104 | 1.6.1.6.1 | API de usuarios | 3d | 2023-07-25 | 2023-07-27 |  | 45.5d | 0d | Desarrollador 1 | 24h |
| 105 | 1.6.1.6.2 | APIs de Picking | 4d | 2023-07-18 | 2023-07-21 | 108 | 51.5d |  | Desarrollador 4 | 32h |
| 106 | 1.6.1.6.3 | API de compra | 3d | 2023-09-13 | 2023-09-15 |  | 11.5d |  | Desarrollador 4 | 24h |
| 107 | 1.6.1.6.4 | API de mensajería | 2d | 2023-07-28 | 2023-07-31 | 104 | 45.5d |  | Desarrollador 1 | 16h |
| 108 | 1.6.1.6.5 | API de transportista | 2d | 2023-07-14 | 2023-07-17 |  | 51.5d | 0d | Desarrollador 4 | 16h |
| 109 | 1.6.1.7 | **Aplicaciones de usuario** | 43d | 2023-07-13 | 2023-09-12 |  | 14.5d | 0d |  | 848h |
| 110 | 1.6.1.7.1 | **App de cliente** | 15d | 2023-07-13 | 2023-08-03 |  | 42.5d |  |  | 248h |
| 111 | 1.6.1.7.1.1 | Desarrollo versión Android | 10d | 2023-07-13 | 2023-07-27 |  | 47.5d |  | Desarrollador 1; Desarrollador 2 | 80h |
| 112 | 1.6.1.7.1.2 | Desarrollo versión iOS | 15d | 2023-07-14 | 2023-08-03 |  | 42.5d |  | Desarrollador 3; Desarrollador 4 | 168h |
| 113 | 1.6.1.7.2 | **App de transportista** | 27d | 2023-07-13 | 2023-08-21 |  | 30.5d |  |  | 248h |
| 114 | 1.6.1.7.2.1 | Desarrollo versión Android | 10d | 2023-07-13 | 2023-08-10 |  | 37.5d |  | Desarrollador 1; Desarrollador 2 | 80h |
| 115 | 1.6.1.7.2.2 | Desarrollo versión iOS | 15d | 2023-08-01 | 2023-08-21 |  | 30.5d |  | Desarrollador 3; Desarrollador 4 | 168h |
| 116 | 1.6.1.7.3 | **App de gestión** | 39d | 2023-07-13 | 2023-09-06 |  | 18.5d |  |  | 248h |
| 117 | 1.6.1.7.3.1 | Desarrollo versión Android | 10d | 2023-07-13 | 2023-08-24 |  | 27.5d |  | Desarrollador 1; Desarrollador 2 | 80h |
| 118 | 1.6.1.7.3.2 | Desarrollo versión iOS | 18d | 2023-08-14 | 2023-09-06 |  | 18.5d |  | Desarrollador 3; Desarrollador 4 | 168h |
| 119 | 1.6.1.7.4 | Dashboard de gestión | 8d | 2023-08-15 | 2023-08-30 |  | 23.5d |  | Desarrollador 1; Desarrollador 2 | 64h |
| 120 | 1.6.1.7.5 | Desarrollo sitio web | 4d | 2023-09-07 | 2023-09-12 |  | 14.5d |  | Desarrollador 3; Desarrollador 4 | 40h |

| ID | WBS | Task | Duration | Start | Finish | Predecessors | Total slack | Free slack | Resources | Work |
| --- | --- | --- | --- | --- | --- | --- | --- | --- | --- | --- |
| 121 | 1.6.2 | **Integración** | 2d | 2023-10-06 | 2023-10-10 | 124 | 5d |  |  | 16h |
| 122 | 1.6.2.1 | Crear vistas de relación de módulos | 1d | 2023-10-06 | 2023-10-09 |  | 5d | 0d | Desarrollador 1 | 8h |
| 123 | 1.6.2.2 | Relacionar módulos | 1d | 2023-10-09 | 2023-10-10 | 122 | 5d |  | Diseñador 2 | 8h |
| 124 | 1.6.3 | **Pruebas** | 60.5d | 2023-07-14 | 2023-10-06 | 81 | 5d | 0d |  | 184h |
| 125 | 1.6.3.1 | Pruebas unitarias | 12d | 2023-07-14 | 2023-07-31 | 94SS | 53.5d |  | Tester 1 | 96h |
| 126 | 1.6.3.2 | Pruebas de carga | 8d | 2023-09-26 | 2023-10-06 | 94 | 5d |  | Tester 2 | 64h |
| 127 | 1.6.3.3 | Pruebas de usabilidad | 3d | 2023-09-13 | 2023-09-15 | 109 | 19.5d |  | Tester 1 | 24h |
| 128 | 1.7 | **Pruebas de aceptación** | 7d | 2023-10-10 | 2023-10-19 | 93 | 5d | 0d |  | 248h |
| 129 | 1.7.1 | Ejecución de pruebas de aceptación | 2d | 2023-10-10 | 2023-10-12 |  | 5d | 0d | Jefe de equipo de pruebas; Tester 1; Tester 2 | 48h |
| 130 | 1.7.2 | Subsanación de faltas | 5d | 2023-10-12 | 2023-10-19 | 129 | 5d |  | Desarrollador 1; Desarrollador 2; Desarrollador 3; Desarrollador 4; Jefe de equipo de desarrollo | 200h |
| 131 | 1.8 | **Prueba de funcionamiento** | 15.2d | 2023-10-19 | 2023-11-09 | 128, 82 | 5d | 0d |  | 600h |
| 132 | 1.8.1 | **Puesta en marcha regional** | 5.2d | 2023-10-19 | 2023-10-26 |  | 5d | 0d |  | 120h |
| 133 | 1.8.1.1 | Instalación en almacén central | 5.2d | 2023-10-19 | 2023-10-26 |  | 5d |  | Técnico de sistemas 1; Técnico de sistemas 2; Administrador de sistemas | 120h |
| 134 | 1.8.2 | Análisis de funcionamiento regional | 5d | 2023-10-26 | 2023-11-02 | 132 | 5d | 0d | Analista de sistemas; Jefe de equipo de desarrollo; Jefe de equipo de diseño; Jefe de equipo de pruebas; Arquitecto de software; Consultor de tecnología | 240h |
| 135 | 1.8.3 | Corrección de puntos débiles | 5d | 2023-11-02 | 2023-11-09 | 134 | 5d |  | Desarrollador 1; Desarrollador 2; Desarrollador 3; Desarrollador 4; Diseñador 1; Diseñador 4 | 240h |
| 136 | 1.9 | **Elaboración de manuales del sistema** | 7d | 2023-11-09 | 2023-11-20 | 131 | 5d | 0d |  | 554h |
| 137 | 1.9.1 | Manual de usuario | 7d | 2023-11-09 | 2023-11-20 |  | 5d |  | Desarrollador 1; Desarrollador 2; Desarrollador 3; Desarrollador 4; Formador; Jefe de equipo de desarrollo | 305h |
| 138 | 1.9.2 | Manual de instalación | 7d | 2023-11-09 | 2023-11-20 |  | 5d |  | Administrador de sistemas; Consultor de tecnología; Técnico de sistemas 1; Técnico de sistemas 2; Formador | 249h |
| 139 | 1.10 | **Despliegue final** | 22d | 2023-11-20 | 2023-12-20 | 136SS | 0d |  |  | 442h |
| 140 | 1.10.1 | Depliegue de sistema de ventas en Cloud | 4d | 2023-11-20 | 2023-11-24 |  | 2d | 0d | Desarrollador 1; Desarrollador 2; Desarrollador 3; Desarrollador 4 | 128h |
| 141 | 1.10.2 | **Instalación en equipos locales** | 18d | 2023-11-24 | 2023-12-20 | 140 | 0d |  |  | 306h |
| 142 | 1.10.2.1 | Instalación en almacén central y zona IV (Oviedo) | 4d | 2023-11-24 | 2023-11-30 |  | 14d |  | Administrador de sistemas; Técnico de sistemas 1; Técnico de sistemas 2 | 68h |
| 143 | 1.10.2.2 | Instalación en almacén en área de distribución V (Gijón) | 2.25d | 2023-11-27 | 2023-12-04 |  | 12d |  | Administrador de sistemas; Técnico de sistemas 1; Técnico de sistemas 2 | 34h |
| 144 | 1.10.2.3 | Instalación en almacén en área de distribución III (Avilés) | 2.25d | 2023-11-27 | 2023-12-06 |  | 10d |  | Administrador de sistemas; Técnico de sistemas 1; Técnico de sistemas 2 | 34h |
| 145 | 1.10.2.4 | Instalación en almacén en área de distribución I | 2.25d | 2023-11-27 | 2023-12-08 |  | 8d |  | Administrador de sistemas; Técnico de sistemas 1; Técnico de sistemas 2 | 34h |
| 146 | 1.10.2.5 | Instalación en almacén en área de distribución II | 2.25d | 2023-11-27 | 2023-12-12 |  | 6d |  | Administrador de sistemas; Técnico de sistemas 1; Técnico de sistemas 2 | 34h |
| 147 | 1.10.2.6 | Instalación en almacén en área de distribución VI | 2.25d | 2023-11-28 | 2023-12-14 |  | 4d |  | Administrador de sistemas; Técnico de sistemas 1; Técnico de sistemas 2 | 34h |
| 148 | 1.10.2.7 | Instalación en almacén en área de distribución VII | 2.25d | 2023-11-28 | 2023-12-18 |  | 2d |  | Administrador de sistemas; Técnico de sistemas 1; Técnico de sistemas 2 | 34h |
| 149 | 1.10.2.8 | Instalación en almacén en área de distribución VIII | 2.25d | 2023-11-28 | 2023-12-20 |  | 0d |  | Administrador de sistemas; Técnico de sistemas 1; Técnico de sistemas 2 | 34h |
| 150 | 1.10.3 | Configurar servidor de Cloud para hacer backups periódicas en servidores locales | 1d | 2023-11-28 | 2023-11-29 | 140 | 14.75d |  | Administrador de sistemas | 8h |

| ID | WBS | Task | Type | Duration | Start | Finish | Predecessors | Total slack | Free slack | Resources | Work |
| --- | --- | --- | --- | --- | --- | --- | --- | --- | --- | --- | --- |
| 151 | 1.11 | **Formación del personal** |  | 17d | 2023-11-20 | 2023-12-13 | 136 | 5d |  |  | 232h |
| 152 | 1.11.1 | Plan de formación |  | 2d | 2023-11-20 | 2023-11-22 |  | 5d | 0d | Formador | 16h |
| 153 | 1.11.2 | Material didáctico |  | 2d | 2023-11-22 | 2023-11-24 | 152 | 5d | 0d | Formador | 16h |
| 154 | 1.11.3 | Sesión de capacitación |  | 10d | 2023-11-24 | 2023-12-08 | 153 | 5d | 0d | Formador | 80h |
| 155 | 1.11.4 | Resultados de la sesión de capacitación |  | 3d | 2023-12-08 | 2023-12-13 | 154 | 5d |  | Formador; Jefe de equipo de desarrollo; Jefe de equipo de diseño; Jefe de equipo de pruebas; Jefe de proyecto | 120h |
| 156 | 1.12 | **Periodo de adaptación** |  | 16d | 2023-12-20 | 2024-01-11 | 151, 139 | 0d |  |  | 376h |
| 157 | 1.12.1 | Seguimiento del funcionamiento |  | 16d | 2023-12-20 | 2024-01-11 |  | 0d |  | Desarrollador 1; Desarrollador 2; Desarrollador 3; Desarrollador 4; Formador | 256h |
| 158 | 1.12.2 | Recopilación de posibles mejoras |  | 5d | 2024-01-04 | 2024-01-11 | 157FF | 0d |  | Jefe de equipo de desarrollo; Jefe de equipo de diseño; Jefe de equipo de pruebas | 120h |
| 159 | 1.13 | **Adaptaciones finales** |  | 5d | 2024-01-11 | 2024-01-18 | 156 | 0d |  |  | 160h |
| 160 | 1.13.1 | Subsanación de errores |  | 5d | 2024-01-11 | 2024-01-18 |  | 0d |  | Desarrollador 1; Desarrollador 2 | 80h |
| 161 | 1.13.2 | Implementación de mejoras |  | 5d | 2024-01-11 | 2024-01-18 |  | 0d |  | Desarrollador 3; Desarrollador 4 | 80h |
| 162 | 1.13.3 | Release de versión final | milestone | 0d | 2024-01-18 | 2024-01-18 | 160, 161 | 0d |  |  |  |
